# Project Plan

Schedule from MS Project, 2024-09-11 to 2033-10-04, costs in $.
University of Canterbury

## Calendars

- Standard: Mon-Fri 08:00-12:00, 13:00-17:00; Sat-Sun off.

## Resources

| Resource | Rate |
| --- | --- |
| CEO | 144 |
| HR | 25 |
| Engineers Civil | 30 |
| Engineers Mech | 30 |
| Engineers Elec | 30 |
| Company overheads | 300 |
| Civil Engineer | 30 |
| Lawyer | 200 |
| CoO | 120 |
| Systems Engineer | 45 |
| CTO | 120 |
| Propulsion Engineer | 40 |
| Electronics Engineer | 30 |
| Software Engineer | 30 |
| Mechanical Engineer | 30 |
| Astrophysicst | 40 |
| Engineering Manager | 60 |
| Manufacturing Lead | 60 |
| Office manager | 25 |
| Astrodynamics simulation expert | 45 |
| Test Engineer | 30 |
| Logistics or shipping lead | 30 |
| Technician | 25 |
| Health and Safety Officer | 30 |
| CFO | 120 |
| GNC Expert | 40 |
| RF Engineer | 40 |
| Embedded Software Engineer | 35 |
| Data Engineer | 30 |
| Simulations Expert | 40 |
| External security | 40 |
| Mechatronics Engineer | 30 |
| Assembly and Integration Engineer | 30 |

## Schedule

| ID | WBS | Task | Type | Duration | Start | Finish | Predecessors | Baseline start | Baseline finish | Baseline duration | Total slack | Constraint | Resources | Work | Cost | Baseline cost |
| --- | --- | --- | --- | --- | --- | --- | --- | --- | --- | --- | --- | --- | --- | --- | --- | --- |
| 1 | 1 | **Asteroid sample retrieval with a 3U CubeSat** |  | 2364.9d? | 2024-09-11 | 2033-10-04 |  | 2020-12-21 | 2024-02-23 | 829d | 0d |  | Company overheads | 65456h | 15,559,328 | 4,419,000 |
| 2 | 1.1 | **(0) Initiate the project** |  | 364d? | 2024-09-11 | 2026-02-02 |  | 2020-12-21 | 2021-06-25 | 134d | 0d |  |  | 3424h | 3,948,128 | 8,000 |
| 3 | 1.1.1 | Start | milestone | 0d | 2024-09-11 | 2024-09-11 |  | 2020-12-21 | 2020-12-21 | 0d | 0d | start no earlier than 2024-09-11 |  |  |  |  |
| 4 | 1.1.2 | **Establish location for facilities in U.S.** |  | 270d? | 2024-09-11 | 2025-09-23 | 3 | 2020-12-22 | 2021-04-09 | 3.95mo | 0d |  |  | 1920h | 3,749,600 | 3,000 |
| 5 | 1.1.2.1 | Survey of facilities |  | 60d? | 2024-09-11 | 2024-12-03 |  |  |  |  | 0d |  | CEO [30%]; CTO | 480h | 57,600 |  |
| 6 | 1.1.2.2 | Purchasing of facilities |  | 150d? | 2024-12-04 | 2025-07-01 | 5 |  |  |  | 0d |  | CFO; Lawyer [20%] | 480h | 3,076,800 |  |
| 7 | 1.1.2.3 | Acquire office equipment |  | 20d? | 2025-07-02 | 2025-07-29 | 6 |  |  |  | 40d |  | Office manager; HR | 320h | 88,000 |  |
| 8 | 1.1.2.4 | Acquire manufacturing equipment |  | 3mo? | 2025-07-02 | 2025-09-23 | 6 |  |  |  | 0d |  | Manufacturing Lead; HR | 640h | 527,200 |  |
| 9 | 1.1.3 | Get funding |  | 4.7mo | 2025-09-23 | 2026-02-02 | 4 | 2020-12-22 | 2021-04-30 | 4.7mo | 0d |  | CEO; CFO | 1504h | 198,528 |  |
| 10 | 1.1.4 | Start project | milestone | 0d | 2026-02-02 | 2026-02-02 | 9 | 2021-06-25 | 2021-06-25 | 0d | 0d |  |  |  |  |  |
| 11 | 1.2 | **(1) Research first mission** |  | 290d? | 2026-02-03 | 2027-03-15 | 10 | 2021-06-28 | 2022-02-04 | 160d | 0d |  |  | 6432h | 1,145,120 | 24,500 |
| 12 | 1.2.1 | Hire staff |  | 3mo | 2026-02-03 | 2026-04-27 |  | 2021-06-28 | 2021-10-15 | 4mo | 0d |  | HR; CEO | 960h | 881,120 | 500 |
| 13 | 1.2.2 | Establish preliminary mission profile |  | 2mo | 2026-04-28 | 2026-06-22 | 12 | 2021-10-18 | 2021-11-12 | 1mo | 0d |  | CTO; Systems Engineer; Engineering Manager; Astrophysicst | 1280h | 84,800 | 4,800 |
| 14 | 1.2.3 | **Suitable locations, modifications needed to 3U satellite.** |  | 190d? | 2026-06-23 | 2027-03-15 | 13 | 2021-11-15 | 2022-02-04 | 60d | 0d |  |  | 4192h | 179,200 | 19,200 |
| 15 | 1.2.3.1 | Investigate suitable targets using LightCurve database. |  | 6mo | 2026-06-23 | 2026-12-07 | 13 | 2021-11-15 | 2021-12-10 | 1mo | 0d |  | Astrophysicst; Astrodynamics simulation expert | 1920h | 81,600 | 4,800 |
| 16 | 1.2.3.2 | Estimate delta-V budget for mission |  | 30d? | 2026-12-08 | 2027-01-18 | 15 |  |  |  | 0d |  | Propulsion Engineer | 240h | 9,600 |  |
| 17 | 1.2.3.3 | Ensure legal precedence for target |  | 14d? | 2026-12-08 | 2026-12-25 | 15 |  |  |  | 56d |  | Lawyer | 112h | 22,400 |  |
| 18 | 1.2.3.4 | Consult needed RF licencing for mission |  | 20d? | 2026-12-08 | 2027-01-04 | 15 |  |  |  | 50d |  | Software Engineer; Electronics Engineer | 320h | 9,600 |  |
| 19 | 1.2.3.5 | Scope first sample retrieval |  | 2mo? | 2027-01-19 | 2027-03-15 | 15, 16 |  |  |  | 0d |  | Electronics Engineer; Software Engineer; Systems Engineer; Propulsion Engineer; Mechanical Engineer | 1600h | 56,000 |  |
| 20 | 1.2.3.6 | Release mission report | milestone | 0d? | 2027-03-15 | 2027-03-15 | 15, 16, 17, 18, 19 | 2021-11-15 | 2022-02-04 | 3mo | 0d |  | Software Engineer; Engineering Manager; CTO |  |  | 14,400 |
| 21 | 1.2.3.7 | Stage gate: Do we have the technical confidence and commercial wherewithall to proceed? |  | 1d? | 2026-06-23 | 2026-06-23 |  |  |  |  | 1570.9d |  |  |  |  |  |
| 22 | 1.3 | **(2) Engineering Model** |  | 1160d? | 2027-03-16 | 2031-08-25 |  |  |  |  | 0d |  |  | 30792h | 3,134,560 |  |
| 23 | 1.3.1 | **Design and Construction of Engineering Model** |  | 860d? | 2027-03-16 | 2030-07-01 | 20 |  |  |  | 0d |  |  | 18632h | 2,589,960 |  |
| 24 | 1.3.1.1 | **Develop needed electronics** |  | 200d? | 2027-03-16 | 2027-12-20 |  |  |  |  | 0d |  |  | 2240h | 126,800 |  |
| 25 | 1.3.1.1.1 | Power management system design |  | 10mo? | 2027-03-16 | 2027-12-20 |  |  |  |  | 0d |  | Electronics Engineer [20%] | 320h | 9,600 |  |
| 26 | 1.3.1.1.2 | Radio system design |  | 10mo? | 2027-03-16 | 2027-12-20 |  |  |  |  | 0d |  | RF Engineer; GNC Expert [20%]; Software Engineer [40%]; Astrophysicst | 1280h | 48,000 |  |
| 27 | 1.3.1.1.3 | Flight computer design |  | 10mo? | 2027-03-16 | 2027-12-20 |  |  |  |  | 0d |  | Software Engineer [20%]; Electronics Engineer [80%] | 640h | 19,200 |  |

Notes:
- 4: Includes purchase of facility lot. / Assuming regulatory zoning and relevant laws are factored into the price. / Legal council is also included in the price.
- 7: This may include general office setup, desks, computers, IT equipment needed.
- 8: This includes machines and clean rooms. / Includes tools and PPE for workers.
- 25: Cost is for procurement of components.

| ID | WBS | Task | Type | Duration | Start | Finish | Predecessors | Baseline start | Baseline finish | Baseline duration | Total slack | Free slack | Resources | Work | Cost | Baseline cost |
| --- | --- | --- | --- | --- | --- | --- | --- | --- | --- | --- | --- | --- | --- | --- | --- | --- |
| 28 | 1.3.1.2 | **Develop needed software** |  | 240d? | 2027-12-21 | 2028-11-20 | 24 |  |  |  | 0d |  |  | 3552h | 134,360 |  |
| 29 | 1.3.1.2.1 | Embedded systems software design |  | 12mo? | 2027-12-21 | 2028-11-20 |  |  |  |  | 0d |  | Software Engineer [60%]; Embedded Software Engineer | 3072h | 101,760 |  |
| 30 | 1.3.1.2.2 | RF systems software design |  | 2.5mo? | 2027-12-21 | 2028-02-28 |  |  |  |  | 190d |  | GNC Expert; Software Engineer [40%]; RF Engineer | 480h | 17,600 |  |
| 31 | 1.3.1.3 | **Develop sample retrieval mechanism** |  | 360d? | 2028-11-21 | 2030-04-08 | 28 |  |  |  | 0d |  |  | 6000h | 520,800 |  |
| 32 | 1.3.1.3.1 | CAD design of component |  | 6mo? | 2028-11-21 | 2029-05-07 |  |  |  |  | 0d |  | Mechanical Engineer | 960h | 28,800 |  |
| 33 | 1.3.1.3.2 | Structural analysis of component |  | 2mo? | 2029-05-08 | 2029-07-02 | 32 |  |  |  | 0d |  | Systems Engineer; Mechanical Engineer; Propulsion Engineer | 960h | 36,800 |  |
| 34 | 1.3.1.3.3 | Fatigue and strain analysis of system |  | 8mo? | 2029-07-03 | 2030-02-11 | 33 |  |  |  | 0d |  | Systems Engineer; Simulations Expert | 2560h | 108,800 |  |
| 35 | 1.3.1.3.4 | Mechanical integration review | milestone | 0d? | 2030-02-11 | 2030-02-11 | 34, 32, 33 |  |  |  | 0d |  | Systems Engineer; CTO; Propulsion Engineer |  |  |  |
| 36 | 1.3.1.3.5 | **Construct model** |  | 40d? | 2030-02-11 | 2030-04-08 | 35 |  |  |  | 0d |  |  | 1520h | 246,400 |  |
| 37 | 1.3.1.3.5.1 | Procure parts |  | 2w? | 2030-02-11 | 2030-02-25 |  |  |  |  | 20d | 0d | Logistics or shipping lead | 80h | 2,400 |  |
| 38 | 1.3.1.3.5.2 | Assemble components |  | 2w? | 2030-02-26 | 2030-03-11 | 37 |  |  |  | 20d |  | Technician; Systems Engineer | 160h | 5,600 |  |
| 39 | 1.3.1.3.5.3 | Test operating of model |  | 2mo? | 2030-02-12 | 2030-04-08 |  |  |  |  | 0d |  | Mechanical Engineer; Mechatronics Engineer; Electronics Engineer; Software Engineer | 1280h | 38,400 |  |
| 40 | 1.3.1.4 | Review propulsion system |  | 3mo? | 2030-04-09 | 2030-07-01 | 31, 28 |  |  |  | 0d |  | Astrodynamics simulation expert; Astrophysicst; Propulsion Engineer; GNC Expert | 1920h | 1,079,200 |  |
| 41 | 1.3.1.5 | Integration check | milestone | 0d? | 2030-07-01 | 2030-07-01 | 40 |  |  |  | 300d |  | CTO; Engineering Manager; Systems Engineer; Propulsion Engineer; Software Engineer; Electronics Engineer |  |  |  |
| 42 | 1.3.1.6 | Manufacture Engineering Model Parts |  | 6mo? | 2027-03-16 | 2027-08-30 |  |  |  |  | 785d | 0d | Engineering Manager; Manufacturing Lead; Mechanical Engineer; Technician | 3840h | 418,000 |  |
| 43 | 1.3.1.7 | Procure Engineering Model Parts |  | 3mo? | 2027-03-16 | 2027-06-07 | 42SS |  |  |  | 785d | 0d |  |  | 200,000 |  |
| 44 | 1.3.1.8 | Final assembly of EM |  | 3w? | 2027-06-08 | 2027-06-28 | 43 |  |  |  | 785d | 725d | Assembly and Integration Engineer | 120h | 3,600 |  |
| 45 | 1.3.1.9 | Establish test facilities |  | 10mo? | 2027-03-16 | 2027-12-20 | 16 |  |  |  | 960d |  | Test Engineer [20%]; HR; Health and Safety Officer | 960h | 107,200 |  |
| 46 | 1.3.2 | **Consulting ride-share requirements** |  | 360d? | 2030-04-09 | 2031-08-25 | 36, 44 |  |  |  | 0d |  |  | 12160h | 544,600 |  |
| 47 | 1.3.2.1 | Determine appropriate orbit to be launched into |  | 60d? | 2030-07-02 | 2030-09-23 | 19, 40 |  |  |  | 0d |  | Propulsion Engineer; Astrophysicst; Astrodynamics simulation expert | 1440h | 60,000 |  |
| 48 | 1.3.2.2 | Establish testing and documentation needed for ride-share requirements |  | 2mo? | 2030-04-09 | 2030-06-03 |  |  |  |  | 310d | 0d | Systems Engineer; Test Engineer; Manufacturing Lead | 960h | 43,200 |  |
| 49 | 1.3.2.3 | Develop in-space commissioning software. |  | 12mo? | 2030-09-24 | 2031-08-25 | 47 |  |  |  | 0d |  | GNC Expert; Software Engineer; Astrodynamics simulation expert; Astrophysicst; Propulsion Engineer | 9600h | 404,400 |  |
| 50 | 1.3.2.4 | Assess logistics to get system to rideshare location |  | 10d? | 2030-06-04 | 2030-06-17 | 48 |  |  |  | 310d |  | Logistics or shipping lead; CoO | 160h | 37,000 |  |
| 51 | 1.4 | **(2) Test campaign of Engineering model** |  | 221.9d? | 2031-08-26 | 2032-06-30 | 44, 45, 22 | 2021-06-28 | 2022-04-29 | 220d | 0d |  |  | 3200h | 194,000 | 86,900 |
| 52 | 1.4.1 | Establish test plan |  | 1.43mo | 2031-08-26 | 2031-10-03 | 44 | 2021-06-28 | 2021-10-15 | 4mo | 0d |  | Test Engineer [70%]; Systems Engineer; CoO | 480h | 31,200 | 500 |
| 53 | 1.4.2 | Identify test location and resources |  | 6.67mo | 2031-10-03 | 2032-04-07 | 52 | 2021-06-28 | 2021-08-20 | 2mo | 0d |  | Test Engineer [30%]; Civil Engineer; Electronics Engineer; Health and Safety Officer | 1280h | 88,400 | 28,800 |
| 54 | 1.4.3 | Hot fire testing of integrated system |  | 1mo? | 2032-04-07 | 2032-05-05 | 52, 53 |  |  |  | 40d |  | Propulsion Engineer; Health and Safety Officer; Systems Engineer | 480h | 38,400 |  |
| 55 | 1.4.4 | Simulate mission with EM. |  | 3mo | 2032-04-07 | 2032-06-30 | 53, 28 | 2021-12-13 | 2022-03-04 | 3mo | 0d |  | Astrodynamics simulation expert; Software Engineer | 960h | 36,000 | 28,800 |
| 56 | 1.5 | Stage gate: Do we have the technical confidence and commercial wherewithall to proceed? | milestone | 0d | 2032-06-30 | 2032-06-30 | 51 | 2022-04-29 | 2022-04-29 | 0d | 0d |  |  |  |  |  |

Notes:
- 30: This includes the communication protocol needed.
- 34: For the integration of the system, such that the RCS system counteracts the in-space movement of the retrieval mechanism.
- 40: Includes procurement at a fixed cost.
- 41: To make sure all systems and sub systems communicate as needed. / It is assumed teams will communicate with eachother as needed during the development stage too, but this is ensuring a stage gate is passed.
- 42: The start to start link indicates the iterative approach to design and manufacture needed for these parts that could not be procured.
- 43: Some of these components will obviously be needed and further ones may be a result of procurement being easier than manufacturing. / As such we link the end of the design phase to this task, but the start of the manufacture phase to this task.
- 44: This is for any last parts that may have been procured. As mentioned in the procurement task, an excess duration was allocated for shipping and logistics.
- 45: Most aerospace propulsion systems are highly dangerous to human health. / This should either be the construction or the establishment of external test facilities. / The propulsion system and its test conditions and safety requirements are known from the delta-V budget task outcome.
- 47: This should be a result of the initial report, once a target has been selected.
- 48: This task may be performed in parallel to the orbit determination. / The duration includes achieving the said tests and providing documentation. / Since the majority of the components are sourced externally, a large amount of testing should not be needed.
- 49: This is assumed to involve some software procurement and licensing at a fixed cost.
- 50: This also includes transport to the location. Since the satellite system isn't large, this shouldn't be too difficult.
- 53: Assumption is that this includes the construction of test facilities, as a fixed cost. / For satellite propulsion, this may need to be a bunker or a container or similar.
- 54: Test the integrated system
- 55: This may include actuation and sequencing.

| ID | WBS | Task | Type | Duration | Start | Finish | Predecessors | Baseline start | Baseline finish | Baseline duration | Total slack | Resources | Work | Cost | Baseline cost |
| --- | --- | --- | --- | --- | --- | --- | --- | --- | --- | --- | --- | --- | --- | --- | --- |
| 57 | 1.6 | **(3) Flight model** |  | 155d? | 2032-06-30 | 2033-02-02 | 56, 51 | 2022-05-02 | 2022-08-19 | 80d | 0d |  | 6280h | 4,409,200 | 10,000 |
| 58 | 1.6.1 | **Design and Build sub systems** |  | 140d? | 2032-06-30 | 2033-01-12 |  | 2022-05-02 | 2022-05-27 | 20d | 0d |  | 5920h | 397,200 | 10,000 |
| 59 | 1.6.1.1 | Establish Engineering Changes needed from EM. |  | 1mo | 2032-06-30 | 2032-07-28 | 21 | 2022-05-02 | 2022-05-27 | 1mo | 0d | CTO; Engineering Manager; Systems Engineer | 480h | 36,000 |  |
| 60 | 1.6.1.2 | Procure needed components |  | 2mo? | 2032-07-28 | 2032-09-22 | 59 |  |  |  | 80d | Logistics or shipping lead; CFO | 640h | 48,000 |  |
| 61 | 1.6.1.3 | Integrate changes. |  | 6mo? | 2032-07-28 | 2033-01-12 | 59 |  |  |  | 0d | Mechanical Engineer; Technician; Systems Engineer; Electronics Engineer; Propulsion Engineer | 4800h | 163,200 |  |
| 62 | 1.6.2 | Test integrated system |  | 3w? | 2033-01-12 | 2033-02-02 | 58 |  |  |  | 0d | Propulsion Engineer; Health and Safety Officer; Test Engineer | 360h | 12,000 |  |
| 63 | 1.7 | Stage gate: Do we have the technical confidence and commercial wherewithall to proceed? | milestone | 0d | 2033-02-02 | 2033-02-02 | 57 | 2022-08-19 | 2022-08-19 | 0d | 0d |  |  |  |  |
| 64 | 1.8 | **(4) Flight campaign** |  | 174d? | 2033-02-02 | 2033-10-04 | 63, 57 | 2022-08-22 | 2024-02-23 | 395d | 0d |  | 9248h | 904,320 | 2,300,000 |
| 65 | 1.8.1 | Communicate and book rideshare flight. |  | 2mo? | 2033-02-02 | 2033-03-30 | 21 |  |  |  | 134d | CFO; CEO; Lawyer; Engineering Manager; Logistics or shipping lead | 1600h | 497,280 |  |
| 66 | 1.8.2 | Establish ground control location |  | 2w | 2033-02-02 | 2033-02-16 |  |  |  |  | 164d | CoO; Health and Safety Officer; HR | 240h | 24,000 |  |
| 67 | 1.8.3 | **Commisioning flight** |  | 90d? | 2033-02-02 | 2033-06-08 |  |  |  |  | 0d |  | 5040h | 252,000 |  |
| 68 | 1.8.3.1 | Monitor system in-space |  | 90d? | 2033-02-02 | 2033-06-08 |  |  |  |  | 0d | Data Engineer; Software Engineer; Astrodynamics simulation expert; Astrophysicst; CTO; Propulsion Engineer; Systems Engineer | 5040h | 252,000 |  |
| 69 | 1.8.3.2 | Functional check | milestone | 0d? | 2033-06-08 | 2033-06-08 | 68 |  |  |  | 0d |  |  |  |  |
| 70 | 1.8.4 | **Flight mission** |  | 14d? | 2033-06-08 | 2033-06-28 | 67 |  |  |  | 0d |  | 448h | 31,040 |  |
| 71 | 1.8.4.1 | First delta-v maneuver |  | 1d? | 2033-06-08 | 2033-06-09 |  |  |  |  | 0d | Propulsion Engineer; GNC Expert | 16h | 640 |  |
| 72 | 1.8.4.2 | Monitor system |  | 10d? | 2033-06-09 | 2033-06-23 | 71 |  |  |  | 0d | GNC Expert; Astrodynamics simulation expert; Astrophysicst; CoO; CTO | 400h | 29,200 |  |
| 73 | 1.8.4.3 | Rendezvous with asteroid |  | 2d? | 2033-06-23 | 2033-06-27 | 72 |  |  |  | 0d | GNC Expert | 16h | 640 |  |
| 74 | 1.8.4.4 | Functional check | milestone | 0d | 2033-06-08 | 2033-06-08 |  |  |  |  | 13d |  |  |  |  |
| 75 | 1.8.4.5 | Perform collection |  | 1d | 2033-06-27 | 2033-06-28 | 74, 73 |  |  |  | 0d | Software Engineer; GNC Expert | 16h | 560 |  |
| 76 | 1.8.5 | **Return mission** |  | 35d? | 2033-06-28 | 2033-08-16 | 70 |  |  |  | 0d |  | 920h | 34,200 |  |
| 77 | 1.8.5.1 | Functional check | milestone | 0d | 2033-06-28 | 2033-06-28 |  |  |  |  | 0d |  |  |  |  |
| 78 | 1.8.5.2 | Departure burn |  | 5d? | 2033-06-28 | 2033-07-05 | 77, 75 |  |  |  | 0d | GNC Expert; Propulsion Engineer | 80h | 3,200 |  |
| 79 | 1.8.5.3 | Monitor system |  | 1mo? | 2033-07-05 | 2033-08-02 | 78 |  |  |  | 0d | GNC Expert; Software Engineer; Systems Engineer; Data Engineer | 640h | 23,200 |  |
| 80 | 1.8.5.4 | Re-entry orbit burn |  | 5d? | 2033-08-02 | 2033-08-09 | 79 |  |  |  | 0d | GNC Expert; RF Engineer; Systems Engineer | 120h | 5,000 |  |
| 81 | 1.8.5.5 | De-orbit burn |  | 1w? | 2033-08-09 | 2033-08-16 | 80 |  |  |  | 0d | GNC Expert; Software Engineer | 80h | 2,800 |  |

Notes:
- 57: Cost comes from having to re-acquire components developed for EM. / So the FM cost has to be at least as much.
- 59: Consulting and consolidating changes needed before flight model gets made.
- 60: Includes shipping costs.
- 61: There are always differences between components and the integrated system. / This entire buffer may not be needed, but is assumed to be mostly needed.
- 66: This may just be part of the facilities purchased at the start.

| ID | WBS | Task | Duration | Start | Finish | Predecessors | Total slack | Resources | Work | Cost |
| --- | --- | --- | --- | --- | --- | --- | --- | --- | --- | --- |
| 82 | 1.8.6 | **Sample collection** | 35d? | 2033-08-16 | 2033-10-04 | 76 | 0d |  | 1000h | 65,800 |
| 83 | 1.8.6.1 | Ground control crew relocation | 2w? | 2033-08-16 | 2033-08-30 |  | 0d | CoO | 80h | 14,600 |
| 84 | 1.8.6.2 | Clear and prepare impact location | 1w? | 2033-08-30 | 2033-09-06 | 83 | 0d | CoO; Logistics or shipping lead; Health and Safety Officer | 120h | 7,200 |
| 85 | 1.8.6.3 | Perform collection | 1mo? | 2033-09-06 | 2033-10-04 | 84 | 0d | External security; Propulsion Engineer; Systems Engineer; CoO; Health and Safety Officer | 800h | 44,000 |
